# Payroll System Gantt Chart

Schedule from MS Project, 2019-06-17 to 2019-08-26, costs in RM, A marks actual dates.

## Calendars

- Standard: Mon-Fri 08:00-12:00, 13:00-17:00; Sat-Sun off.

## Resources

| Resource | Rate |
| --- | --- |
| Project Manager | 25 |
| System Analyst | 20 |
| Programmer | 18.75 |
| System Designer | 16.25 |
| System Tester | 15 |

## Schedule

| ID | WBS | Task | Type | Duration | Start | Finish | Predecessors | Complete | Remaining | Total slack | Resources | Work | Actual work | Cost | Baseline cost | Actual cost |
| --- | --- | --- | --- | --- | --- | --- | --- | --- | --- | --- | --- | --- | --- | --- | --- | --- |
| 1 | 1 | **System Planning** |  | 9d | 2019-06-17 A | 2019-06-27 A |  | 100% |  |  |  | 80h | 80h | 1,760 |  | 1,760 |
| 2 | 1.1 | Develop the development Team and Assign task to the team | manual | 1d | 2019-06-17 A | 2019-06-17 A |  | 100% |  |  | Project Manager | 8h | 8h | 200 | 190 | 200 |
| 3 | 1.2 | Conduct Feasibility Analysis | manual | 1d | 2019-06-18 A | 2019-06-18 A | 2 | 100% |  |  | Project Manager; System Analyst | 16h | 16h | 360 | 360 | 360 |
| 4 | 1.3 | Produce Feasibility Analysis Report | manual | 2d | 2019-06-19 A | 2019-06-20 A | 3 | 100% |  |  | System Analyst | 16h | 16h | 320 | 320 | 320 |
| 5 | 1.4 | Produce Project Plan Document | manual | 2d | 2019-06-21 A | 2019-06-24 A | 4 | 100% |  |  | System Analyst; Project Manager | 16h | 16h | 340 | 330 | 340 |
| 6 | 1.5 | Review Project Plan Document | manual | 1d | 2019-06-25 A | 2019-06-25 A | 5 | 100% |  |  | Project Manager; System Analyst | 8h | 8h | 200 | 190 | 200 |
| 7 | 1.6 | Produce Quality Assurance Plan Document | manual | 2d | 2019-06-26 A | 2019-06-27 A | 5, 6 | 100% |  |  | System Analyst; Project Manager | 16h | 16h | 340 | 340 | 340 |
| 8 | 2 | **System Analysis** |  | 5d | 2019-06-28 A | 2019-07-04 A |  | 100% |  |  |  | 48h | 48h | 1,120 |  | 1,120 |
| 9 | 2.1 | Conduct Fact Findings & Gather requirements | manual | 2d | 2019-06-28 A | 2019-07-01 A | 7 | 100% |  |  | System Analyst | 16h | 16h | 420 | 430 | 420 |
| 10 | 2.2 | Analysis of data gathering | manual | 1d | 2019-07-02 A | 2019-07-02 A | 9 | 100% |  |  | System Analyst | 8h | 8h | 160 | 360 | 160 |
| 11 | 2.3 | Produce System Requirement Specification | manual | 1d | 2019-07-03 A | 2019-07-03 A | 10 | 100% |  |  | System Analyst | 8h | 8h | 180 | 190 | 180 |
| 12 | 2.4 | Review System Requirement Specification | manual | 1d | 2019-07-04 A | 2019-07-04 A | 11 | 100% |  |  | Project Manager; System Analyst | 16h | 16h | 360 | 360 | 360 |
| 13 | 3 | **System Design** |  | 8d | 2019-07-05 A | 2019-07-16 A |  | 100% |  |  |  | 64h | 64h | 1,180 |  | 1,180 |
| 14 | 3.1 | Database Design | manual | 2d | 2019-07-05 A | 2019-07-08 A | 12 | 100% |  |  | System Designer | 16h | 16h | 280 | 280 | 280 |
| 15 | 3.2 | Design System Process | manual | 3d | 2019-07-09 A | 2019-07-11 A | 14 | 100% |  |  | System Designer | 24h | 24h | 440 | 430 | 440 |
| 16 | 3.3 | Design Interface System | manual | 2d | 2019-07-12 A | 2019-07-15 A | 15 | 100% |  |  | System Designer | 16h | 16h | 310 | 300 | 310 |
| 17 | 3.4 | Produce the SDS | manual | 1d | 2019-07-16 A | 2019-07-16 A | 16, 14, 15 | 100% |  |  | System Designer; System Analyst | 8h | 8h | 150 | 150 | 150 |
| 18 | 4 | **Implementation** |  | 29d | 2019-07-17 A | 2019-08-26 |  | 24% | 22.02d | 0d |  | 216h | 52h | 4,090 |  | 975 |
| 19 | 4.1 | Writing Codes | manual | 4d | 2019-07-17 A | 2019-07-22 A | 17 | 100% |  |  | Programmer | 32h | 32h | 600 | 590 | 600 |
| 20 | 4.2 | Prepare Test Plan | manual | 1d | 2019-07-23 A | 2019-07-23 A | 19 | 100% |  |  | System Analyst | 8h | 8h | 180 | 30 | 180 |
| 21 | 4.3 | Testing | manual | 1d | 2019-07-26 A | 2019-07-26 A | 20 | 100% |  |  | System Tester | 8h | 8h | 120 | 120 | 120 |
| 22 | 4.4 | Installation software | manual | 1d | 2019-07-29 A | 2019-07-29 | 21 | 50% | 0.5d |  | Programmer | 8h | 4h | 150 | 270 | 75 |
| 23 | 4.5 | Conduct UAT | manual | 6d | 2019-07-30 | 2019-08-06 | 22 |  |  |  | System Tester | 48h |  | 720 |  |  |
| 24 | 4.6 | Produce User Manual | manual | 4d | 2019-08-07 | 2019-08-12 | 23 |  |  |  | System Analyst | 32h |  | 640 |  |  |
| 25 | 4.7 | Conduct User Training | manual | 8d | 2019-08-13 | 2019-08-22 | 24 |  |  |  | System Analyst | 64h |  | 1,280 |  |  |
| 26 | 4.8 | System Sign Off | manual | 2d | 2019-08-23 | 2019-08-26 | 25 |  |  |  | Project Manager | 16h |  | 400 |  |  |
